# A&D High Tech Online Store

How a schedule from MS Project changed from version to version. A marks actual dates.

## Version 1 (saved 2016-07-09)

Note of the change: Initial commit.

| ID | WBS | Task | Duration | Start | Finish | Predecessors |
| --- | --- | --- | --- | --- | --- | --- |
| 1 | 1 | **Overall Project** | 350d | 2014-05-27 | 2015-09-28 |  |
| 2 | 1.1 | **Project Management** | 127d | 2014-05-27 | 2014-11-19 |  |
| 3 |  | Manage Project | 127d | 2014-05-27 | 2014-11-19 | 59FF |
| 4 | 1.2 | **System Requirements** | 29d? | 2014-05-27 | 2014-07-04 |  |
| 5 |  | Gather Business Requirements | 8d | 2014-05-27 | 2014-06-05 |  |
| 6 |  | Design Business Process Flows | 4d | 2014-06-06 | 2014-06-11 | 5 |
| 7 |  | Finalize Technical Requirements | 6d | 2014-05-12 | 2014-05-19 |  |
| 8 |  | Create Operational Requirements | 15d | 2014-06-12 | 2014-07-02 | 5, 6 |
| 9 |  | Identify Technical Infrastructure Needs | 2d | 2014-07-03 | 2014-07-04 | 7, 8 |
| 10 | 1.3 | **Software Requirements** | 16d? | 2014-05-27 | 2014-06-17 |  |
| 11 | 1.3.1 | **Create Functional Requirements** | 1d? | 2014-05-27 | 2014-05-27 | 5, 6, 8 |
| 12 |  | Capture Customer Profile | 4d | 2014-05-27 | 2014-05-30 |  |
| 13 |  | View and Search Product Catalog | 6d | 2014-05-27 | 2014-06-03 |  |
| 14 |  | Updating and Calculating Shopping Cart | 3d | 2014-06-04 | 2014-06-06 | 13 |
| 15 |  | Taking Payments | 6d | 2014-05-27 | 2014-06-03 |  |
| 16 |  | Submit Order | 4d | 2014-06-09 | 2014-06-12 | 12, 13, 14, 15 |
| 17 |  | Check Order History & Order Status | 3d | 2014-06-13 | 2014-06-17 | 16 |
| 18 |  | Create Data Requirements | 3d | 2014-06-04 | 2014-06-06 | 12, 13 |
| 19 |  | Create ERP Interface Requirements | 7d | 2014-06-09 | 2014-06-17 | 16SS |
| 20 |  | Create User Interface Requirements | 4d | 2014-05-27 | 2014-05-30 | 11SS |
| 21 | 1.4 | **Detailed Design** | 1d? | 2014-07-04 | 2014-07-04 | 10 |
| 22 |  | Design Capture Customer Profile Pages & Components | 13.5d | 2014-07-04 | 2014-07-23 |  |
| 23 |  | Design View and Search Product Catalog Pages & Components | 13.5d | 2014-07-04 | 2014-07-23 |  |
| 24 |  | Design Updating and Calculating Shopping Cart | 6d | 2014-07-24 | 2014-07-31 | 23 |
| 25 |  | Design Taking Payments Pages & Components | 6d | 2014-07-04 | 2014-07-11 |  |
| 26 |  | Design Submit Order Pages & Components | 16d | 2014-08-01 | 2014-08-22 | 22, 23, 24, 25 |
| 27 |  | Design Check Order History & Order Status Pages & Components | 4d | 2014-08-23 | 2014-08-27 | 26 |
| 28 |  | Design Logical & Physical Data Model | 18d | 2014-07-04 | 2014-07-29 |  |
| 29 |  | Design ERP Interface | 20d | 2014-08-01 | 2014-08-28 | 22, 23, 24, 25 |
| 30 | 1.5 | **Test Planning** | 1d? | 2014-05-27 | 2014-05-27 |  |
| 31 |  | Gather Testing Requirements | 14d | 2014-05-27 | 2014-06-13 | 11 |
| 32 |  | Create System Test Plan & Test Cases | 20d | 2014-08-29 | 2014-09-25 | 31, 21 |
| 33 |  | Write System Test Scripts | 22d | 2014-09-26 | 2014-10-27 | 32 |
| 34 | 1.6 | **Technical Infrastructure** | 1d? | 2014-05-27 | 2014-05-27 |  |
| 35 |  | Create Development Environment | 20d | 2014-07-07 | 2014-11-24 | 9 |
| 36 |  | Create Testing Environment | 34.2d | 2014-08-01 | 2014-09-18 | 35 |
| 37 |  | Support Development Environment | 3.8d | 2014-08-01 | 2014-08-06 | 35 |
| 38 |  | Support Testing Environment & Deployment | 46d | 2014-09-19 | 2014-11-21 | 36 |
| 39 |  | Support Database | 4.6d | 2014-06-17 | 2014-06-24 | 47 |
| 40 | 1.7 | **Development & Unit Test** | 1d? | 2014-05-27 | 2014-05-27 | 35 |
| 41 |  | Build Capture Customer Profile Pages & Components | 13d | 2014-07-24 | 2014-08-11 | 22 |
| 42 |  | Build View and Search Product Catalog Pages & Components | 12d | 2014-07-24 | 2014-08-08 | 23 |
| 43 |  | Build Updating and Calculating Shopping Cart | 7d | 2014-08-09 | 2014-08-18 | 24, 42 |
| 44 |  | Build Taking Payments Pages & Components | 6d | 2014-07-12 | 2014-07-18 | 25 |
| 45 |  | Build Submit Order Pages & Components | 24d | 2014-08-23 | 2014-09-24 | 26, 41, 42, 43, 44 |
| 46 |  | Build Check Order History & Order Status Pages & Components | 6d | 2014-08-28 | 2014-09-04 | 27 |
| 47 |  | Build Logical & Physical Data Model | 15.5d | 2014-07-30 | 2014-08-20 | 28 |
| 48 |  | Build ERP Interface | 18d | 2014-08-29 | 2014-09-23 | 29 |
| 49 |  | Support Development & Assembly Test | 46d | 2014-08-29 | 2014-10-31 | 21 |
| 50 | 1.8 | **Testing** | 1d? | 2014-08-19 | 2014-08-19 |  |
| 51 | 1.8.1 | **Perform Assembly Testing** | 1d? | 2014-08-19 | 2014-08-19 | 31 |
| 52 |  | Perform Phase 1 Testing | 12d | 2014-08-19 | 2014-09-03 | 41, 42, 43 |
| 53 |  | Perform Phase 2 Testing | 20d | 2014-09-25 | 2014-10-22 | 44, 45, 46, 52, 47, 48 |
| 54 |  | Perform System Testing | 160d | 2014-10-28 | 2015-06-08 | 51, 32, 33 |
| 55 |  | Perform Validation Testing | 80d | 2015-06-09 | 2015-09-28 | 54 |
| 56 | 1.9 | **Deployment** | 1d? | 2014-05-27 | 2014-05-27 |  |
| 57 |  | Implement System | 80d | 2014-05-28 | 2014-09-16 | 50 |
| 58 |  | Deploy To Production | 8d | 2014-09-17 | 2014-09-26 | 57 |
| 59 |  | Project Wrap-Up | 90d | 2014-09-29 | 2015-01-30 | 58 |
| 60 | 1.10 | **Training and Documentation** | 9d | 2014-09-30 | 2014-10-10 |  |
| 61 | 1.10.1 | **Create Documentation** | 5d | 2014-09-30 | 2014-10-06 |  |
| 62 |  | Document Technical Specification | 1d | 2014-09-30 | 2014-09-30 |  |
| 63 |  | Document Source Code | 1d | 2014-10-01 | 2014-10-01 |  |
| 64 |  | Prepare System Documentation manual | 1d | 2014-10-02 | 2014-10-02 |  |
| 65 |  | Prepare Sales Staff Training Manual | 1d | 2014-10-03 | 2014-10-03 |  |
| 66 |  | Prepare Retail Customer Support Training Manual | 1d | 2014-10-06 | 2014-10-06 |  |
| 67 | 1.10.2 | **Training** | 4d | 2014-10-07 | 2014-10-10 |  |
| 68 |  | Create Training Schedule | 1d | 2014-10-07 | 2014-10-07 |  |
| 69 |  | Train retail customer support | 4d | 2014-10-07 | 2014-10-10 |  |
| 70 |  | Train Sales Department Staff | 4d | 2014-10-07 | 2014-10-10 |  |

## Version 2 (saved 2016-07-19)

Note of the change: First step edits

Last finish 2015-09-28 → 2015-01-14 (-257d).

Added:

| ID | Task | Duration | Start | Finish | Predecessors | Resources |
| --- | --- | --- | --- | --- | --- | --- |
| 4 | Document project progress | 125d | 2014-05-30 | 2014-11-25 | 68FF | Chris Johnson (Project Manager) [10%] |
| 8 | Document Business Process Flows | 0.5d | 2014-06-09 | 2014-06-09 | 7 | Ryan Neff (Functional Lead); Stacy Lyle (Functional Analyst) |
| 12 | Document Requirements | 0.66d | 2014-06-13 | 2014-06-16 | 6, 9, 10, 11 | Rick Burke (Infrastructure Lead); Stacy Lyle (Functional Analyst); Ryan Neff (Functional Lead) |
| 21 | Document Functional requirements | 0.5d | 2014-07-16 | 2014-07-17 | 15, 16, 17, 18, 19, 20 | Ryan Neff (Functional Lead); Stacy Lyle (Functional Analyst) |
| 25 | Document Data, ERP Interface and User Interface Requiremnts | 1d | 2014-07-10 | 2014-07-11 | 22, 23, 24 | Stacy Lyle (Functional Analyst) |
| 32 | Design check Order History & Order Status Pages & Components | 2d | 2014-08-12 | 2014-08-14 | 31 | Marc Sanders (Development Lead); Ryan Neff (Functional Lead) |
| 35 | Document the design of all modules | 0.2d | 2014-08-22 | 2014-08-22 | 27, 28, 29, 30, 31, 32, 33, 34 | Ryan Neff (Functional Lead); Stacy Lyle (Functional Analyst); Developer 1 (TBD); Marc Sanders (Development Lead); Sanjay Vohra (DBA) |
| 46 | Document Technical infrastructure details | 0.5d | 2014-11-20 | 2014-11-20 | 41, 42, 43, 44, 45 | Rick Burke (Infrastructure Lead); Sanjay Vohra (DBA) |
| 48 | Train developers | 3d | 2014-07-30 | 2014-08-04 | 27 | Trainer 1; Developer 1 (TBD); Developer 2 (TBD); Developer 3 (TBD) |
| 58 | Document development work and best practices | 0.29d | 2014-09-25 | 2014-09-25 | 49, 50, 51, 52, 53, 54, 55, 56, 57 | Developer 1 (TBD); Developer 2 (TBD); Developer 3 (TBD); Stacy Lyle (Functional Analyst); Sanjay Vohra (DBA); Marc Sanders (Development Lead); Ryan Neff (Functional Lead) |
| 65 | Document tests and test results | 0.33d | 2014-10-29 | 2014-10-29 | 60, 63, 64 | Developer 1 (TBD); Developer 2 (TBD); Developer 3 (TBD); Kara Siposki (Test Lead); Stacy Lyle (Functional Analyst); Todd Eliason (Tester) |
| 69 | Project Wrap up | 24.44d | 2014-11-25 | 2015-01-06 | 68 | Developer 1 (TBD) [81.8%]; Developer 2 (TBD) [81.8%]; Developer 3 (TBD) [81.8%]; Kara Siposki (Test Lead) [81.8%]; Marc Sanders (Development Lead) [81.8%]; Ryan Neff (Functional Lead) [81.8%]; Stacy Lyle (Functional Analyst) [81.8%]; Todd Eliason (Tester) [81.8%] |

Removed: 27 Design Check Order History & Order Status Pages & Components; 59 Project Wrap-Up; 60 Training and Documentation; 61 Create Documentation; 62 Document Technical Specification; 63 Document Source Code; 64 Prepare System Documentation manual; 65 Prepare Sales Staff Training Manual; 66 Prepare Retail Customer Support Training Manual; 67 Training; 68 Create Training Schedule; 69 Train retail customer support; 70 Train Sales Department Staff

Changed:

| ID | Task | Start | Finish | Duration | Total float | Predecessors | Other |
| --- | --- | --- | --- | --- | --- | --- | --- |
| 1 | **Overall Project** |  | 2015-09-28 → 2015-01-14 (-257d) | 350d → 160d | none → -4d |  |  |
| 2 | **Project Management** |  | 2014-11-19 → 2015-01-14 (+56d) | 127d → 160d | none → 0d |  |  |
| 3 | Manage Project |  | 2014-11-19 → 2015-01-14 (+56d) | 127d → 160d | none → 0d | Project Wrap-UpFF → 69FF | resources Chris Johnson → Chris Johnson (Project Manager) [90%] |
| 5 | **System Requirements** |  | 2014-07-04 → 2014-06-13 (-21d) | 29d? → 13.33d |  |  |  |
| 6 | Gather Business Requirements |  | 2014-06-05 → 2014-05-30 (-6d) | 8d → 4d | none → -4d |  | resources Ryan Neff; Stacy Lyle → Ryan Neff (Functional Lead); Stacy Lyle (Functional Analyst) |
| 7 | Design Business Process Flows | 2014-06-06 → 2014-06-02 (-4d) | 2014-06-11 → 2014-06-03 (-8d) | 4d → 2d | none → -4d |  | resources Ryan Neff; Stacy Lyle → Ryan Neff (Functional Lead); Stacy Lyle (Functional Analyst) |
| 9 | Finalize Technical Requirements | 2014-05-12 → 2014-05-27 (+15d) | 2014-05-19 → 2014-06-03 (+15d) |  | none → 4d |  | resources Rick Burke → Rick Burke (Infrastructure Lead) |
| 10 | Create Operational Requirements | 2014-06-12 → 2014-06-04 (-8d) | 2014-07-02 → 2014-06-10 (-22d) | 15d → 5d | none → -4d |  | resources Stacy Lyle; Rick Burke; Ryan Neff → Ryan Neff (Functional Lead); Stacy Lyle (Functional Analyst); Rick Burke (Infrastructure Lead) |
| 11 | Identify Technical Infrastructure Needs | 2014-07-03 → 2014-06-11 (-22d) | 2014-07-04 → 2014-06-12 (-22d) |  | none → -1d |  | resources Rick Burke → Rick Burke (Infrastructure Lead) |
| 13 | **Software Requirements** | 2014-05-27 → 2014-06-11 (+15d) | 2014-06-17 → 2014-07-10 (+23d) | 16d? → 20.5d |  |  |  |
| 14 | **Create Functional Requirements** | 2014-05-27 → 2014-06-11 (+15d) | 2014-05-27 → 2014-07-10 (+44d) | 1d? → 20.5d |  |  |  |
| 15 | Capture Customer Profile | 2014-05-27 → 2014-06-19 (+23d) | 2014-05-30 → 2014-06-25 (+26d) |  | none → -1.83d |  | resources Ryan Neff → Ryan Neff (Functional Lead) |
| 16 | View and Search Product Catalog | 2014-05-27 → 2014-06-11 (+15d) | 2014-06-03 → 2014-06-19 (+16d) |  | none → -4.5d |  | resources Ryan Neff → Ryan Neff (Functional Lead) |
| 17 | Updating and Calculating Shopping Cart | 2014-06-04 → 2014-06-25 (+21d) | 2014-06-06 → 2014-06-30 (+24d) |  | none → -4.83d |  | resources Ryan Neff → Ryan Neff (Functional Lead) |
| 18 | Taking Payments | 2014-05-27 → 2014-06-11 (+15d) | 2014-06-03 → 2014-06-19 (+16d) |  | none → 2.17d |  | resources Stacy Lyle → Stacy Lyle (Functional Analyst) |
| 19 | Submit Order | 2014-06-09 → 2014-06-30 (+21d) | 2014-06-12 → 2014-07-11 (+29d) | 4d → 8d | none → -4.83d |  | resources Ryan Neff → Ryan Neff (Functional Lead) [50%] |
| 20 | Check Order History & Order Status | 2014-06-13 → 2014-07-11 (+28d) | 2014-06-17 → 2014-07-16 (+29d) |  | none → -4.83d |  | resources Ryan Neff → Ryan Neff (Functional Lead) |
| 22 | Create Data Requirements | 2014-06-04 → 2014-06-25 (+21d) | 2014-06-06 → 2014-06-30 (+24d) |  | none → 5.67d |  | resources Stacy Lyle → Stacy Lyle (Functional Analyst) |
| 23 | Create ERP Interface Requirements | 2014-06-09 → 2014-06-30 (+21d) | 2014-06-17 → 2014-07-10 (+23d) |  | none → -1.33d |  | resources Stacy Lyle → Stacy Lyle (Functional Analyst) |
| 24 | Create User Interface Requirements | 2014-05-27 → 2014-06-19 (+23d) | 2014-05-30 → 2014-06-25 (+26d) |  | none → 8.67d |  | resources Stacy Lyle → Stacy Lyle (Functional Analyst) |
| 26 | **Detailed Design** | 2014-07-04 → 2014-07-10 (+6d) | 2014-07-04 → 2014-08-22 (+49d) | 1d? → 31.19d | none → -5d |  |  |
| 27 | Design Capture Customer Profile Pages & Components | 2014-07-04 → 2014-07-10 (+6d) | 2014-07-23 → 2014-07-30 (+7d) | 13.5d → 14d | none → -5d |  | resources Marc Sanders; Ryan Neff → Marc Sanders (Development Lead); Ryan Neff (Functional Lead) [50%] |
| 28 | Design View and Search Product Catalog Pages & Components | 2014-07-04 → 2014-07-10 (+6d) | 2014-07-23 → 2014-07-25 (+2d) | 13.5d → 10.66d | none → 4.2d |  | resources Developer 1; Ryan Neff → Developer 1 (TBD); Ryan Neff (Functional Lead) [50%] |
| 29 | Design Updating and Calculating Shopping Cart | 2014-07-24 → 2014-07-25 (+1d) | 2014-07-31 → 2014-07-30 (-1d) | 6d → 3.42d | none → 4.2d |  | resources Developer 1; Ryan Neff → Developer 1 (TBD); Ryan Neff (Functional Lead) |
| 30 | Design Taking Payments Pages & Components | 2014-07-04 → 2014-07-10 (+6d) | 2014-07-11 → 2014-07-22 (+11d) | 6d → 5.83d | none → 10.28d |  | resources Stacy Lyle; Marc Sanders → Marc Sanders (Development Lead); Stacy Lyle (Functional Analyst) |
| 31 | Design Submit Order Pages & Components | 2014-08-01 → 2014-07-30 (-2d) | 2014-08-22 → 2014-08-12 (-10d) | 16d → 9.25d | none → 9.86d |  | resources Marc Sanders; Ryan Neff → Marc Sanders (Development Lead); Ryan Neff (Functional Lead) |
| 33 | Design Logical & Physical Data Model | 2014-07-04 → 2014-07-10 (+6d) | 2014-07-29 → 2014-07-30 (+1d) | 18d → 13.83d | none → -1.83d |  | resources Sanjay Vohra; Stacy Lyle → Sanjay Vohra (DBA); Stacy Lyle (Functional Analyst) |
| 34 | Design ERP Interface | 2014-08-01 → 2014-07-30 (-2d) | 2014-08-28 → 2014-08-22 (-6d) | 20d → 16.91d | none → 4.2d |  | resources Stacy Lyle; Developer 1 → Developer 1 (TBD) [66.7%]; Stacy Lyle (Functional Analyst) [66.7%] |
| 36 | **Test Planning** | 2014-05-27 → 2014-07-10 (+44d) | 2014-05-27 → 2014-09-29 (+125d) | 1d? → 55.86d | none → 4.2d |  |  |
| 37 | Gather Testing Requirements | 2014-05-27 → 2014-07-10 (+44d) | 2014-06-13 → 2014-07-21 (+38d) | 14d → 7d | none → 28.39d |  | resources Kara Siposki; Todd Eliason → Kara Siposki (Test Lead); Todd Eliason (Tester) |
| 38 | Create System Test Plan & Test Cases | 2014-08-29 → 2014-08-22 (-7d) | 2014-09-25 → 2014-09-08 (-17d) | 20d → 10d | none → 4.2d |  | resources Kara Siposki; Todd Eliason → Kara Siposki (Test Lead); Todd Eliason (Tester) |
| 39 | Write System Test Scripts | 2014-09-26 → 2014-09-08 (-18d) | 2014-10-27 → 2014-09-29 (-28d) | 22d → 14.67d | none → 4.2d |  | resources Kara Siposki; Todd Eliason → Kara Siposki (Test Lead); Todd Eliason (Tester) |
| 40 | **Technical Infrastructure** | 2014-05-27 → 2014-06-13 (+17d) | 2014-05-27 → 2014-11-13 (+170d) | 1d? → 108d |  |  |  |
| 41 | Create Development Environment | 2014-07-07 → 2014-06-13 (-24d) | 2014-11-24 → 2014-07-14 (-133d) |  | none → 3.17d |  | resources Rick Burke → Rick Burke (Infrastructure Lead) |
| 42 | Create Testing Environment | 2014-08-01 → 2014-07-14 (-18d) | 2014-09-18 → 2014-09-05 (-13d) | 34.2d → 38d | none → 3.17d |  | resources Rick Burke → Rick Burke (Infrastructure Lead) [90%] |
| 43 | Support Development Environment | 2014-08-01 → 2014-07-14 (-18d) | 2014-08-06 → 2014-09-05 (+30d) | 3.8d → 38d | none → 49.17d |  | resources Rick Burke → Rick Burke (Infrastructure Lead) [10%] |
| 44 | Support Testing Environment & Deployment | 2014-09-19 → 2014-09-05 (-14d) | 2014-11-21 → 2014-11-10 (-11d) |  | none → 3.17d |  | resources Rick Burke → Rick Burke (Infrastructure Lead) |
| 45 | Support Database | 2014-06-17 → 2014-09-17 (+92d) | 2014-06-24 → 2014-11-20 (+149d) | 4.6d → 46d | none → -5d |  | resources Sanjay Vohra → Sanjay Vohra (DBA) [10%] |
| 47 | **Development & Unit Test** | 2014-05-27 → 2014-07-30 (+64d) | 2014-05-27 → 2014-09-25 (+121d) | 1d? → 40.48d | none → -5d |  |  |
| 49 | Build Capture Customer Profile Pages & Components | 2014-07-24 → 2014-08-04 (+11d) | 2014-08-11 → 2014-08-21 (+10d) |  | none → 13.05d | 27 → 27, 48 | resources Developer 2 → Developer 2 (TBD) |
| 50 | Build View and Search Product Catalog Pages & Components | 2014-07-24 → 2014-08-04 (+11d) | 2014-08-08 → 2014-08-20 (+12d) |  | none → 7.05d | 28 → 28, 48 | resources Developer 3 → Developer 3 (TBD) |
| 51 | Build Updating and Calculating Shopping Cart | 2014-08-09 → 2014-08-20 (+11d) | 2014-08-18 → 2014-08-29 (+11d) |  | none → 7.05d | 29, 50 → 29, 50, 48 | resources Developer 3 → Developer 3 (TBD) |
| 52 | Build Taking Payments Pages & Components | 2014-07-12 → 2014-08-21 (+40d) | 2014-07-18 → 2014-08-29 (+42d) |  | none → 7.05d | 30 → 30, 48 | resources Developer 2 → Developer 2 (TBD) |
| 53 | Build Submit Order Pages & Components | 2014-08-23 → 2014-08-29 (+6d) | 2014-09-24 → 2014-09-17 (-7d) | 24d → 12d | none → 7.05d | 31, 49, 50, 51, 52 → 31, 49, 50, 51, 52, 48 | resources Developer 2; Developer 3 → Developer 2 (TBD); Developer 3 (TBD) |
| 54 | Build Check Order History & Order Status Pages & Components | 2014-08-28 → 2014-08-14 (-14d) | 2014-09-04 → 2014-08-25 (-10d) |  | none → 23.52d | Design Check Order History & Order Status Pages & Components → 32, 48 | resources Marc Sanders → Marc Sanders (Development Lead) |
| 55 | Build Logical & Physical Data Model | 2014-07-30 → 2014-08-04 (+5d) | 2014-08-20 → 2014-09-17 (+28d) | 15.5d → 31d | none → -5d | 33 → 33, 48 | resources Sanjay Vohra → Sanjay Vohra (DBA) [50%] |
| 56 | Build ERP Interface | 2014-08-29 → 2014-08-22 (-7d) | 2014-09-23 → 2014-09-18 (-5d) |  | none → 6.06d | 34 → 34, 48 | resources Developer 1 → Developer 1 (TBD) |
| 57 | Support Development & Assembly Test | 2014-08-29 → 2014-08-22 (-7d) | 2014-10-31 → 2014-09-25 (-36d) | 46d → 23d | none → 74.02d | 26 → 26, 48 | resources Ryan Neff; Stacy Lyle → Ryan Neff (Functional Lead); Stacy Lyle (Functional Analyst) |
| 59 | **Testing** | 2014-08-19 → 2014-08-22 (+3d) | 2014-08-19 → 2014-11-04 (+77d) | 1d? → 51.2d |  |  |  |
| 60 | **Perform Assembly Testing** | 2014-08-19 → 2014-08-29 (+10d) | 2014-08-19 → 2014-09-25 (+37d) | 1d? → 17.99d | none → 6.06d |  |  |
| 61 | Perform Phase 1 Testing | 2014-08-19 → 2014-08-29 (+10d) | 2014-09-03 → 2014-09-17 (+14d) |  | none → 7.05d |  | resources Marc Sanders → Marc Sanders (Development Lead) |
| 62 | Perform Phase 2 Testing | 2014-09-25 → 2014-09-18 (-7d) | 2014-10-22 → 2014-09-25 (-27d) | 20d → 5d | none → 6.06d |  | resources Developer 1; Developer 2; Developer 3; Marc Sanders → Marc Sanders (Development Lead); Developer 1 (TBD); Developer 2 (TBD); Developer 3 (TBD) |
| 63 | Perform System Testing | 2014-10-28 → 2014-09-29 (-29d) | 2015-06-08 → 2014-10-17 (-234d) | 160d → 14.55d | none → 4.2d |  | resources Todd Eliason; Kara Siposki; Developer 1; Developer 2; Developer 3; Marc Sanders; Ryan Neff; Stacy Lyle → Developer 1 (TBD); Developer 2 (TBD); Developer 3 (TBD); Kara Siposki (Test Lead); Marc Sanders (Development Lead); Ryan Neff (Functional Lead); Stacy Lyle (Functional Analyst); Todd Eliason (Tester); End-User; ERP Expert; Order Processing expert |
| 64 | Perform Validation Testing | 2015-06-09 → 2014-10-17 (-235d) | 2015-09-28 → 2014-10-29 (-334d) | 80d → 7.27d | none → 4.2d |  | resources Developer 1; Developer 2; Developer 3; Kara Siposki; Marc Sanders; Todd Eliason; Stacy Lyle; Ryan Neff → Kara Siposki (Test Lead); Todd Eliason (Tester); Marc Sanders (Development Lead); Developer 1 (TBD); Developer 2 (TBD); Developer 3 (TBD); Ryan Neff (Functional Lead); Stacy Lyle (Functional Analyst); End-User; ERP Expert; Order Processing expert |
| 66 | **Deployment** | 2014-05-27 → 2014-11-10 (+167d) | 2014-05-27 → 2015-01-06 (+224d) | 1d? → 35.77d | none → 6.87d | none → 59 |  |
| 67 | Implement System | 2014-05-28 → 2014-11-10 (+166d) | 2014-09-16 → 2014-11-24 (+69d) | 80d → 10.33d | none → 6.87d | 59 → none | resources Developer 1; Developer 2; Developer 3; Kara Siposki; Ryan Neff; Stacy Lyle; Marc Sanders; Todd Eliason → Kara Siposki (Test Lead); Todd Eliason (Tester); Marc Sanders (Development Lead); Developer 1 (TBD); Developer 2 (TBD); Developer 3 (TBD); Ryan Neff (Functional Lead); Stacy Lyle (Functional Analyst) |
| 68 | Deploy To Production | 2014-09-17 → 2014-11-24 (+68d) | 2014-09-26 → 2014-11-25 (+60d) | 8d → 1d | none → 6.87d |  | resources Developer 1; Developer 2; Developer 3; Kara Siposki; Ryan Neff; Stacy Lyle; Marc Sanders; Todd Eliason → Kara Siposki (Test Lead); Todd Eliason (Tester); Marc Sanders (Development Lead); Developer 1 (TBD); Developer 2 (TBD); Developer 3 (TBD); Ryan Neff (Functional Lead); Stacy Lyle (Functional Analyst) |

## Version 3 (saved 2016-07-21)

Note of the change: Sandy's edits updated

Last finish 2015-01-14 → 2015-02-24 (+41d).

Added:

| ID | Task | Duration | Start | Finish | Predecessors | Constraint | Resources |
| --- | --- | --- | --- | --- | --- | --- | --- |
| 5 | **Project Team Status Meetings** | 159d | 2014-05-27 | 2015-01-13 |  |  |  |
| 6 | **Weekly Team Lead Meeting** | 159d | 2014-05-27 | 2015-01-13 |  |  |  |
| 7 | Weekly Team Lead Meeting 1 | 4d | 2014-05-27 | 2014-05-30 |  | start no earlier than 2014-05-27 | Chris Johnson (Project Manager) [25%]; Kara Siposki (Test Lead) [25%]; Marc Sanders (Development Lead) [25%]; Rick Burke (Infrastructure Lead) [25%]; Ryan Neff (Functional Lead) [25%] |
| 8 | Weekly Team Lead Meeting 2 | 1d | 2014-06-03 | 2014-06-03 |  | start no earlier than 2014-06-03 | Chris Johnson (Project Manager) [25%]; Kara Siposki (Test Lead) [25%]; Marc Sanders (Development Lead) [25%]; Rick Burke (Infrastructure Lead) [25%]; Ryan Neff (Functional Lead) [25%] |
| 9 | Weekly Team Lead Meeting 3 | 1d | 2014-06-10 | 2014-06-10 |  | start no earlier than 2014-06-10 | Chris Johnson (Project Manager) [25%]; Kara Siposki (Test Lead) [25%]; Marc Sanders (Development Lead) [25%]; Rick Burke (Infrastructure Lead) [25%]; Ryan Neff (Functional Lead) [25%] |
| 10 | Weekly Team Lead Meeting 4 | 1d | 2014-06-17 | 2014-06-17 |  | start no earlier than 2014-06-17 | Chris Johnson (Project Manager) [25%]; Kara Siposki (Test Lead) [25%]; Marc Sanders (Development Lead) [25%]; Rick Burke (Infrastructure Lead) [25%]; Ryan Neff (Functional Lead) [25%] |
| 11 | Weekly Team Lead Meeting 5 | 1d | 2014-06-24 | 2014-06-24 |  | start no earlier than 2014-06-24 | Chris Johnson (Project Manager) [25%]; Kara Siposki (Test Lead) [25%]; Marc Sanders (Development Lead) [25%]; Rick Burke (Infrastructure Lead) [25%]; Ryan Neff (Functional Lead) [25%] |
| 12 | Weekly Team Lead Meeting 6 | 1d | 2014-07-01 | 2014-07-01 |  | start no earlier than 2014-07-01 | Chris Johnson (Project Manager) [25%]; Kara Siposki (Test Lead) [25%]; Marc Sanders (Development Lead) [25%]; Rick Burke (Infrastructure Lead) [25%]; Ryan Neff (Functional Lead) [25%] |
| 13 | Weekly Team Lead Meeting 7 | 1d | 2014-07-08 | 2014-07-08 |  | start no earlier than 2014-07-08 | Chris Johnson (Project Manager) [25%]; Kara Siposki (Test Lead) [25%]; Marc Sanders (Development Lead) [25%]; Rick Burke (Infrastructure Lead) [25%]; Ryan Neff (Functional Lead) [25%] |
| 14 | Weekly Team Lead Meeting 8 | 1d | 2014-07-15 | 2014-07-15 |  | start no earlier than 2014-07-15 | Chris Johnson (Project Manager) [25%]; Kara Siposki (Test Lead) [25%]; Marc Sanders (Development Lead) [25%]; Rick Burke (Infrastructure Lead) [25%]; Ryan Neff (Functional Lead) [25%] |
| 15 | Weekly Team Lead Meeting 9 | 1d | 2014-07-22 | 2014-07-22 |  | start no earlier than 2014-07-22 | Chris Johnson (Project Manager) [25%]; Kara Siposki (Test Lead) [25%]; Marc Sanders (Development Lead) [25%]; Rick Burke (Infrastructure Lead) [25%]; Ryan Neff (Functional Lead) [25%] |
| 16 | Weekly Team Lead Meeting 10 | 1d | 2014-07-29 | 2014-07-29 |  | start no earlier than 2014-07-29 | Chris Johnson (Project Manager) [25%]; Kara Siposki (Test Lead) [25%]; Marc Sanders (Development Lead) [25%]; Rick Burke (Infrastructure Lead) [25%]; Ryan Neff (Functional Lead) [25%] |
| 17 | Weekly Team Lead Meeting 11 | 1d | 2014-08-05 | 2014-08-05 |  | start no earlier than 2014-08-05 | Chris Johnson (Project Manager) [25%]; Kara Siposki (Test Lead) [25%]; Marc Sanders (Development Lead) [25%]; Rick Burke (Infrastructure Lead) [25%]; Ryan Neff (Functional Lead) [25%] |
| 18 | Weekly Team Lead Meeting 12 | 1d | 2014-08-12 | 2014-08-12 |  | start no earlier than 2014-08-12 | Chris Johnson (Project Manager) [25%]; Kara Siposki (Test Lead) [25%]; Marc Sanders (Development Lead) [25%]; Rick Burke (Infrastructure Lead) [25%]; Ryan Neff (Functional Lead) [25%] |
| 19 | Weekly Team Lead Meeting 13 | 1d | 2014-08-19 | 2014-08-19 |  | start no earlier than 2014-08-19 | Chris Johnson (Project Manager) [25%]; Kara Siposki (Test Lead) [25%]; Marc Sanders (Development Lead) [25%]; Rick Burke (Infrastructure Lead) [25%]; Ryan Neff (Functional Lead) [25%] |
| 20 | Weekly Team Lead Meeting 14 | 1d | 2014-08-26 | 2014-08-26 |  | start no earlier than 2014-08-26 | Chris Johnson (Project Manager) [25%]; Kara Siposki (Test Lead) [25%]; Marc Sanders (Development Lead) [25%]; Rick Burke (Infrastructure Lead) [25%]; Ryan Neff (Functional Lead) [25%] |
| 21 | Weekly Team Lead Meeting 15 | 1d | 2014-09-02 | 2014-09-02 |  | start no earlier than 2014-09-02 | Chris Johnson (Project Manager) [25%]; Kara Siposki (Test Lead) [25%]; Marc Sanders (Development Lead) [25%]; Rick Burke (Infrastructure Lead) [25%]; Ryan Neff (Functional Lead) [25%] |
| 22 | Weekly Team Lead Meeting 16 | 1d | 2014-09-09 | 2014-09-09 |  | start no earlier than 2014-09-09 | Chris Johnson (Project Manager) [25%]; Kara Siposki (Test Lead) [25%]; Marc Sanders (Development Lead) [25%]; Rick Burke (Infrastructure Lead) [25%]; Ryan Neff (Functional Lead) [25%] |
| 23 | Weekly Team Lead Meeting 17 | 1d | 2014-09-16 | 2014-09-16 |  | start no earlier than 2014-09-16 | Chris Johnson (Project Manager) [25%]; Kara Siposki (Test Lead) [25%]; Marc Sanders (Development Lead) [25%]; Rick Burke (Infrastructure Lead) [25%]; Ryan Neff (Functional Lead) [25%] |
| 24 | Weekly Team Lead Meeting 18 | 1d | 2014-09-23 | 2014-09-23 |  | start no earlier than 2014-09-23 | Chris Johnson (Project Manager) [25%]; Kara Siposki (Test Lead) [25%]; Marc Sanders (Development Lead) [25%]; Rick Burke (Infrastructure Lead) [25%]; Ryan Neff (Functional Lead) [25%] |
| 25 | Weekly Team Lead Meeting 19 | 1d | 2014-09-30 | 2014-09-30 |  | start no earlier than 2014-09-30 | Chris Johnson (Project Manager) [25%]; Kara Siposki (Test Lead) [25%]; Marc Sanders (Development Lead) [25%]; Rick Burke (Infrastructure Lead) [25%]; Ryan Neff (Functional Lead) [25%] |
| 26 | Weekly Team Lead Meeting 20 | 1d | 2014-10-07 | 2014-10-07 |  | start no earlier than 2014-10-07 | Chris Johnson (Project Manager) [25%]; Kara Siposki (Test Lead) [25%]; Marc Sanders (Development Lead) [25%]; Rick Burke (Infrastructure Lead) [25%]; Ryan Neff (Functional Lead) [25%] |
| 27 | Weekly Team Lead Meeting 21 | 1d | 2014-10-14 | 2014-10-14 |  | start no earlier than 2014-10-14 | Chris Johnson (Project Manager) [25%]; Kara Siposki (Test Lead) [25%]; Marc Sanders (Development Lead) [25%]; Rick Burke (Infrastructure Lead) [25%]; Ryan Neff (Functional Lead) [25%] |
| 28 | Weekly Team Lead Meeting 22 | 1d | 2014-10-21 | 2014-10-21 |  | start no earlier than 2014-10-21 | Chris Johnson (Project Manager) [25%]; Kara Siposki (Test Lead) [25%]; Marc Sanders (Development Lead) [25%]; Rick Burke (Infrastructure Lead) [25%]; Ryan Neff (Functional Lead) [25%] |
| 29 | Weekly Team Lead Meeting 23 | 1d | 2014-10-28 | 2014-10-28 |  | start no earlier than 2014-10-28 | Chris Johnson (Project Manager) [25%]; Kara Siposki (Test Lead) [25%]; Marc Sanders (Development Lead) [25%]; Rick Burke (Infrastructure Lead) [25%]; Ryan Neff (Functional Lead) [25%] |
| 30 | Weekly Team Lead Meeting 24 | 1d | 2014-11-04 | 2014-11-04 |  | start no earlier than 2014-11-04 | Chris Johnson (Project Manager) [25%]; Kara Siposki (Test Lead) [25%]; Marc Sanders (Development Lead) [25%]; Rick Burke (Infrastructure Lead) [25%]; Ryan Neff (Functional Lead) [25%] |
| 31 | Weekly Team Lead Meeting 25 | 1d | 2014-11-11 | 2014-11-11 |  | start no earlier than 2014-11-11 | Chris Johnson (Project Manager) [25%]; Kara Siposki (Test Lead) [25%]; Marc Sanders (Development Lead) [25%]; Rick Burke (Infrastructure Lead) [25%]; Ryan Neff (Functional Lead) [25%] |
| 32 | Weekly Team Lead Meeting 26 | 1d | 2014-11-18 | 2014-11-18 |  | start no earlier than 2014-11-18 | Chris Johnson (Project Manager) [25%]; Kara Siposki (Test Lead) [25%]; Marc Sanders (Development Lead) [25%]; Rick Burke (Infrastructure Lead) [25%]; Ryan Neff (Functional Lead) [25%] |
| 33 | Weekly Team Lead Meeting 27 | 1d | 2014-11-25 | 2014-11-25 |  | start no earlier than 2014-11-25 | Chris Johnson (Project Manager) [25%]; Kara Siposki (Test Lead) [25%]; Marc Sanders (Development Lead) [25%]; Rick Burke (Infrastructure Lead) [25%]; Ryan Neff (Functional Lead) [25%] |
| 34 | Weekly Team Lead Meeting 28 | 1d | 2014-12-02 | 2014-12-02 |  | start no earlier than 2014-12-02 | Chris Johnson (Project Manager) [25%]; Kara Siposki (Test Lead) [25%]; Marc Sanders (Development Lead) [25%]; Rick Burke (Infrastructure Lead) [25%]; Ryan Neff (Functional Lead) [25%] |
| 35 | Weekly Team Lead Meeting 29 | 1d | 2014-12-09 | 2014-12-09 |  | start no earlier than 2014-12-09 | Chris Johnson (Project Manager) [25%]; Kara Siposki (Test Lead) [25%]; Marc Sanders (Development Lead) [25%]; Rick Burke (Infrastructure Lead) [25%]; Ryan Neff (Functional Lead) [25%] |
| 36 | Weekly Team Lead Meeting 30 | 1d | 2014-12-16 | 2014-12-16 |  | start no earlier than 2014-12-16 | Chris Johnson (Project Manager) [25%]; Kara Siposki (Test Lead) [25%]; Marc Sanders (Development Lead) [25%]; Rick Burke (Infrastructure Lead) [25%]; Ryan Neff (Functional Lead) [25%] |
| 37 | Weekly Team Lead Meeting 31 | 1d | 2014-12-23 | 2014-12-23 |  | start no earlier than 2014-12-23 | Chris Johnson (Project Manager) [25%]; Kara Siposki (Test Lead) [25%]; Marc Sanders (Development Lead) [25%]; Rick Burke (Infrastructure Lead) [25%]; Ryan Neff (Functional Lead) [25%] |
| 38 | Weekly Team Lead Meeting 32 | 1d | 2014-12-30 | 2014-12-30 |  | start no earlier than 2014-12-30 | Chris Johnson (Project Manager) [25%]; Kara Siposki (Test Lead) [25%]; Marc Sanders (Development Lead) [25%]; Rick Burke (Infrastructure Lead) [25%]; Ryan Neff (Functional Lead) [25%] |
| 39 | Weekly Team Lead Meeting 33 | 1d | 2015-01-06 | 2015-01-06 |  | start no earlier than 2015-01-06 | Chris Johnson (Project Manager) [25%]; Kara Siposki (Test Lead) [25%]; Marc Sanders (Development Lead) [25%]; Rick Burke (Infrastructure Lead) [25%]; Ryan Neff (Functional Lead) [25%] |
| 40 | Weekly Team Lead Meeting 34 | 1d | 2015-01-13 | 2015-01-13 |  | start no earlier than 2015-01-13 | Chris Johnson (Project Manager) [25%]; Kara Siposki (Test Lead) [25%]; Marc Sanders (Development Lead) [25%]; Rick Burke (Infrastructure Lead) [25%]; Ryan Neff (Functional Lead) [25%] |
| 41 | **Monthly All Hands Meeting** | 127d | 2014-06-26 | 2014-12-26 |  |  |  |
| 42 | Monthly All Hands Meeting 1 | 1d | 2014-06-26 | 2014-06-26 |  | start no earlier than 2014-06-26 | Chris Johnson (Project Manager) [25%]; Developer 1 (TBD) [25%]; Developer 2 (TBD) [25%]; Developer 3 (TBD) [25%]; End-User [25%]; ERP Expert [25%]; Kara Siposki (Test Lead) [25%]; Marc Sanders (Development Lead) [25%]; Order Processing expert [25%]; Rick Burke (Infrastru... |
| 43 | Monthly All Hands Meeting 2 | 1d | 2014-07-24 | 2014-07-24 |  | start no earlier than 2014-07-24 | Chris Johnson (Project Manager) [25%]; Developer 1 (TBD) [25%]; Developer 2 (TBD) [25%]; Developer 3 (TBD) [25%]; End-User [25%]; ERP Expert [25%]; Kara Siposki (Test Lead) [25%]; Marc Sanders (Development Lead) [25%]; Order Processing expert [25%]; Rick Burke (Infrastru... |
| 44 | Monthly All Hands Meeting 3 | 1d | 2014-08-28 | 2014-08-28 |  | start no earlier than 2014-08-28 | Chris Johnson (Project Manager) [25%]; Developer 1 (TBD) [25%]; Developer 2 (TBD) [25%]; Developer 3 (TBD) [25%]; End-User [25%]; ERP Expert [25%]; Kara Siposki (Test Lead) [25%]; Marc Sanders (Development Lead) [25%]; Order Processing expert [25%]; Rick Burke (Infrastru... |
| 45 | Monthly All Hands Meeting 4 | 1d | 2014-09-25 | 2014-09-25 |  | start no earlier than 2014-09-25 | Chris Johnson (Project Manager) [25%]; Developer 1 (TBD) [25%]; Developer 2 (TBD) [25%]; Developer 3 (TBD) [25%]; End-User [25%]; ERP Expert [25%]; Kara Siposki (Test Lead) [25%]; Marc Sanders (Development Lead) [25%]; Order Processing expert [25%]; Rick Burke (Infrastru... |
| 46 | Monthly All Hands Meeting 5 | 1d | 2014-10-23 | 2014-10-23 |  | start no earlier than 2014-10-23 | Chris Johnson (Project Manager) [25%]; Developer 1 (TBD) [25%]; Developer 2 (TBD) [25%]; Developer 3 (TBD) [25%]; End-User [25%]; ERP Expert [25%]; Kara Siposki (Test Lead) [25%]; Marc Sanders (Development Lead) [25%]; Order Processing expert [25%]; Rick Burke (Infrastru... |
| 47 | Monthly All Hands Meeting 6 | 1d | 2014-11-28 | 2014-11-28 |  | start no earlier than 2014-11-27 | Chris Johnson (Project Manager) [25%]; Developer 1 (TBD) [25%]; Developer 2 (TBD) [25%]; Developer 3 (TBD) [25%]; End-User [25%]; ERP Expert [25%]; Kara Siposki (Test Lead) [25%]; Marc Sanders (Development Lead) [25%]; Order Processing expert [25%]; Rick Burke (Infrastru... |
| 48 | Monthly All Hands Meeting 7 | 1d | 2014-12-26 | 2014-12-26 |  | start no earlier than 2014-12-25 | Chris Johnson (Project Manager) [25%]; Developer 1 (TBD) [25%]; Developer 2 (TBD) [25%]; Developer 3 (TBD) [25%]; End-User [25%]; ERP Expert [25%]; Kara Siposki (Test Lead) [25%]; Marc Sanders (Development Lead) [25%]; Order Processing expert [25%]; Rick Burke (Infrastru... |
| 49 | **Monthly Stakeholder Update** | 132d | 2014-05-27 | 2014-12-01 |  |  |  |
| 50 | Prepare Monthly Stakeholder Update 1 | 2d | 2014-05-27 | 2014-05-28 |  | start no earlier than 2014-05-27 | Chris Johnson (Project Manager) [25%] |
| 51 | Prepare Monthly Stakeholder Update 2 | 2d | 2014-06-27 | 2014-06-30 |  | start no earlier than 2014-06-27 | Chris Johnson (Project Manager) [25%] |
| 52 | Prepare Monthly Stakeholder Update 3 | 2d | 2014-07-28 | 2014-07-29 |  | start no earlier than 2014-07-27 | Chris Johnson (Project Manager) [25%] |
| 53 | Prepare Monthly Stakeholder Update 4 | 2d | 2014-08-27 | 2014-08-28 |  | start no earlier than 2014-08-27 | Chris Johnson (Project Manager) [25%] |
| 54 | Prepare Monthly Stakeholder Update 5 | 2d | 2014-09-29 | 2014-09-30 |  | start no earlier than 2014-09-27 | Chris Johnson (Project Manager) [25%] |
| 55 | Prepare Monthly Stakeholder Update 6 | 2d | 2014-10-27 | 2014-10-28 |  | start no earlier than 2014-10-27 | Chris Johnson (Project Manager) [25%] |
| 56 | Prepare Monthly Stakeholder Update 7 | 2d | 2014-11-28 | 2014-12-01 |  | start no earlier than 2014-11-27 | Chris Johnson (Project Manager) [25%] |
| 57 | **Set-up Activities** | 1d | 2014-05-27 | 2014-05-27 |  |  |  |
| 58 | Project Team Kickoff Meeting | 1d | 2014-05-27 | 2014-05-27 |  |  | Chris Johnson (Project Manager) [25%]; Developer 1 (TBD) [25%]; Developer 2 (TBD) [25%]; Developer 3 (TBD) [25%]; End-User [25%]; ERP Expert [25%]; Kara Siposki (Test Lead) [25%]; Marc Sanders (Development Lead) [25%]; Order Processing expert [25%]; Rick Burke (Infrastru... |
| 59 | Kickoff Pizza Lunch | 1d | 2014-05-27 | 2014-05-27 |  |  | Chris Johnson (Project Manager) [25%]; Developer 1 (TBD) [25%]; Developer 2 (TBD) [25%]; Developer 3 (TBD) [25%]; End-User [25%]; ERP Expert [25%]; Kara Siposki (Test Lead) [25%]; Marc Sanders (Development Lead) [25%]; Order Processing expert [25%]; Rick Burke (Infrastructure Lead) [25%]; Ryan Neff (Functional Lead) [25%]; Sanjay Vohra (DBA) [25%]; Stacy Lyle (Functional Analyst) [25%]; Todd Eliason (Tester) [25%]; Trainer 1 [25%] |
| 102 | **Privacy & Security Measures** | 22.8d | 2014-08-22 | 2014-09-25 |  |  |  |
| 103 | **Server Security** | 22.8d | 2014-08-22 | 2014-09-25 |  |  |  |
| 104 | Perform Vulnerability Risk Assessment | 5d | 2014-08-22 | 2014-08-29 | 90 |  | Chris Johnson (Project Manager) [10%]; Rick Burke (Infrastru... [25%]; Additional Analyst 1 [50%] |
| 105 | Develop Backup & Restore Policy | 2d | 2014-08-29 | 2014-09-03 | 104 |  | Additional Analyst 1 |
| 106 | Develop Contingency Plan for Security Breaches | 3d | 2014-08-29 | 2014-09-04 | 104 |  | Additional Analyst 1 |
| 107 | Implement Security Controls | 5d | 2014-09-18 | 2014-09-25 | 124 |  | Developer 1 (TBD) |
| 108 | **Physical Security** | 20d | 2014-08-22 | 2014-09-22 |  |  |  |
| 109 | Perform Vulnerability Risk Assessment | 5d | 2014-08-22 | 2014-08-29 | 90 |  | Chris Johnson (Project Manager) [10%]; Rick Burke (Infrastru... [25%]; Additional Analyst 2 [50%] |
| 110 | Develop Natural Disaster Recovery Plan | 5d | 2014-08-29 | 2014-09-08 | 109 |  | Additional Analyst 2 |
| 111 | Secure Physical Premises | 10d | 2014-09-08 | 2014-09-22 | 110 |  | Rick Burke (Infrastru... [25%] |
| 112 | **User Security** | 2d | 2014-09-08 | 2014-09-10 |  |  |  |
| 113 | Develop End User Privacy Policy | 1d | 2014-09-08 | 2014-09-09 | 110 |  | End-User; Additional Analyst 2 |
| 114 | Develop Password Policy | 1d | 2014-09-09 | 2014-09-10 | 113 |  | Additional Analyst 2 |
| 134 | **Quality Control** | 39.67d | 2014-09-17 | 2014-11-12 |  |  |  |
| 135 | Develop QC Plan | 5d | 2014-09-17 | 2014-09-24 | 129 |  | Kara Siposki (Test Lead) [25%] |
| 136 | **Perform QC** | 10d | 2014-10-29 | 2014-11-12 |  |  |  |
| 137 | Check All Site Links | 2d | 2014-10-29 | 2014-10-31 | 132 |  | Todd Eliason (Tester) [25%] |
| 138 | Review Server Error Logs | 3d | 2014-10-29 | 2014-11-03 | 132 |  | Todd Eliason (Tester) [25%] |
| 139 | Perform Cross-Browser Testing | 3d | 2014-10-29 | 2014-11-03 | 132 |  | Todd Eliason (Tester) [25%] |
| 140 | Accessibility Testing | 5d | 2014-10-29 | 2014-11-05 | 132 |  | Todd Eliason (Tester) [25%] |
| 141 | Corrective Action | 5d | 2014-11-05 | 2014-11-12 | 140 |  | Developer 1 (TBD); Developer 2 (TBD) |
| 146 | **Maintenance & Support** | 102.71d | 2014-09-25 | 2015-02-24 |  |  |  |
| 147 | Train end users | 2d | 2014-10-29 | 2014-10-31 | 133 |  | Trainer 1 |
| 148 | Develop maintenance strategy | 5d | 2014-09-25 | 2014-10-02 | 126 |  | Additional Analyst 1 |
| 149 | Develop end user support strategy | 5d | 2014-09-25 | 2014-10-02 | 126 |  | Additional Analyst 2 |
| 150 | Document problems and resolutions | 60d | 2014-11-25 | 2015-02-24 | 144 |  | Sanjay Vohra (DBA) [25%] |
| 151 | Monitor performance | 60d | 2014-11-25 | 2015-02-24 | 144 |  | Sanjay Vohra (DBA) [25%] |

Changed:

| ID | Task | Start | Finish | Duration | Total float | Predecessors |
| --- | --- | --- | --- | --- | --- | --- |
| 1 | **Overall Project** |  | 2015-01-14 → 2015-02-24 (+41d) | 160d → 188.69d | -4d → -5d |  |
| 61 | Gather Business Requirements | 2014-05-27 → 2014-05-28 (+1d) | 2014-05-30 → 2014-06-02 (+3d) |  | -4d → -5d | none → 59 |
| 62 | Design Business Process Flows | 2014-06-02 → 2014-06-03 (+1d) | 2014-06-03 → 2014-06-04 (+1d) |  | -4d → -5d |  |
| 63 | Document Business Process Flows | 2014-06-09 → 2014-06-10 (+1d) | 2014-06-09 → 2014-06-10 (+1d) |  | 3.83d → 2.83d |  |
| 65 | Create Operational Requirements | 2014-06-04 → 2014-06-05 (+1d) | 2014-06-10 → 2014-06-11 (+1d) |  | -4d → -5d |  |
| 66 | Identify Technical Infrastructure Needs | 2014-06-11 → 2014-06-12 (+1d) | 2014-06-12 → 2014-06-13 (+1d) |  | -1d → -0.67d |  |
| 67 | Document Requirements | 2014-06-13 → 2014-06-12 (-1d) | 2014-06-16 → 2014-06-13 (-3d) |  | -1d → 0d | 61, 64, 65, 66 → 61, 64, 65 |
| 96 | Create Development Environment | 2014-06-13 → 2014-06-16 (+3d) | 2014-07-14 → 2014-07-15 (+1d) |  | 3.17d → 2.17d |  |
| 97 | Create Testing Environment | 2014-07-14 → 2014-07-15 (+1d) | 2014-09-05 → 2014-09-08 (+3d) |  | 3.17d → 2.17d |  |
| 98 | Support Development Environment | 2014-07-14 → 2014-07-15 (+1d) | 2014-09-05 → 2014-09-08 (+3d) |  | 49.17d → 48.17d |  |
| 99 | Support Testing Environment & Deployment | 2014-09-05 → 2014-09-08 (+3d) | 2014-11-10 → 2014-11-11 (+1d) |  | 3.17d → 2.17d |  |
